# Project MacOS

Schedule from MS Project, 2019-02-25 to 2019-04-26.

## Calendars

- Стандартный: Mon-Fri 09:00-13:00, 14:00-18:00; Sat-Sun off. Exceptions (off unless hours are given): 2019-02-25 to 2019-04-26 09:00-13:00, 14:00-18:00 (My).

## Resources

| Resource |
| --- |
| Stas Bespalov |
| Nikita Dik |
| Stas Bespalov, Nikita Dik |

## Schedule

| ID | WBS | Task | Type | Duration | Start | Finish | Predecessors | Constraint | Resources | Work |
| --- | --- | --- | --- | --- | --- | --- | --- | --- | --- | --- |
| 1 | 1 | **MacOS Stream** |  | 60.5d | 2019-02-25 | 2019-04-26 |  |  |  | 860.92h |
| 2 | 1.1 | Research | manual | 22d | 2019-02-26 | 2019-03-20 |  | start no earlier than 2019-02-26 | Nikita Dik; Stas Bespalov | 270.62h |
| 3 | 1.2 | Prototype | manual | 3.5d | 2019-03-21 | 2019-03-24 | 2 | start no earlier than 2019-03-21 | Nikita Dik; Stas Bespalov | 30h |
| 4 | 1.3 | **Development (time including documentation and tests covering)** |  | 31.69d | 2019-03-25 | 2019-04-24 | 3 |  |  | 560.3h |
| 5 | 1.3.1 | **Control** |  | 7.88d | 2019-03-25 | 2019-04-01 |  |  |  | 46.8h |
| 6 | 1.3.1.1 | Receiving commands on ios | manual | 5d | 2019-03-25 | 2019-03-29 |  |  | Stas Bespalov | 24.6h |
| 7 | 1.3.1.2 | Command implementation | manual | 2.5d | 2019-03-29 | 2019-04-01 | 6 |  | Stas Bespalov | 15.2h |
| 8 | 1.3.1.3 | Code review | manual | 0.38d | 2019-04-01 | 2019-04-01 |  |  | Nikita Dik | 3h |
| 9 | 1.3.1.4 | Correction after review | manual | 0.5d | 2019-04-01 | 2019-04-01 |  |  | Stas Bespalov | 4h |
| 10 | 1.3.2 | **Data transfer** |  | 26.69d | 2019-03-25 | 2019-04-20 |  |  |  | 281.5h |
| 11 | 1.3.2.1 | **Server** |  | 24.69d | 2019-03-25 | 2019-04-18 |  |  |  | 225.5h |
| 12 | 1.3.2.1.1 | Deep research (Reactor, SocketAcceptor, TCP and UDP. Image scaling) | manual | 10.5d | 2019-03-26 | 2019-04-04 |  |  | Nikita Dik | 84h |
| 13 | 1.3.2.1.2 | **Primary tasks** |  | 14.69d | 2019-04-04 | 2019-04-18 |  |  |  | 141.5h |
| 14 | 1.3.2.1.2.1 | 1 to 1 TCP connection implementation (one paralel thread worker) | manual | 5.69d | 2019-04-04 | 2019-04-09 |  |  | Nikita Dik | 45.5h |
| 15 | 1.3.2.1.2.2 | TCP stream "packet" framer (for user input and dynamically sized images) | manual | 3.75d | 2019-04-09 | 2019-04-12 |  |  | Nikita Dik | 30h |
| 16 | 1.3.2.1.2.3 | [Optional] Object-oriented TCP framer | manual | 1.75d | 2019-04-12 | 2019-04-12 |  |  |  |  |
| 17 | 1.3.2.1.2.4 | TCP message receiver and de-framer | manual | 3.75d | 2019-04-12 | 2019-04-14 |  |  | Nikita Dik | 30h |
| 18 | 1.3.2.1.2.5 | Fast encoder | manual | 4.75d | 2019-04-14 | 2019-04-17 |  |  |  |  |
| 19 | 1.3.2.1.2.6 | InputReceiver | manual | 1.75d | 2019-04-17 | 2019-04-17 |  |  | Nikita Dik | 14h |
| 20 | 1.3.2.1.2.7 | InputManager | manual | 2.75d | 2019-04-17 | 2019-04-18 |  |  | Nikita Dik | 22h |
| 21 | 1.3.2.2 | **Client** |  | 3.75d | 2019-04-18 | 2019-04-20 |  |  |  | 30h |
| 22 | 1.3.2.2.1 | Connection/reconnection | manual | 0.5d | 2019-04-18 | 2019-04-18 |  |  | Nikita Dik | 4h |
| 23 | 1.3.2.2.2 | Video frame receiver | manual | 2.75d | 2019-04-18 | 2019-04-19 |  |  | Nikita Dik | 22h |
| 24 | 1.3.2.2.3 | Input events sender | manual | 0.5d | 2019-04-19 | 2019-04-19 |  |  | Nikita Dik | 4h |
| 25 | 1.3.2.3 | Code review | manual | 0.5d | 2019-04-19 | 2019-04-19 |  | start no earlier than 2019-04-19 | Stas Bespalov | 4h |
| 26 | 1.3.2.4 | Correction after review | manual | 2.75d | 2019-04-19 | 2019-04-20 |  |  | Nikita Dik | 22h |

| ID | WBS | Task | Type | Duration | Start | Finish | Predecessors | Resources | Work |
| --- | --- | --- | --- | --- | --- | --- | --- | --- | --- |
| 27 | 1.3.3 | **Stream Display** |  | 2.75d | 2019-04-20 | 2019-04-22 |  |  | 34h |
| 28 | 1.3.3.1 | ScreenGrabber | manual | 1.75d | 2019-04-20 | 2019-04-21 |  | Nikita Dik | 14h |
| 29 | 1.3.3.2 | **Rendering** |  | 0.5d | 2019-04-21 | 2019-04-21 |  |  | 4h |
| 30 | 1.3.3.2.1 | Bytes to image converter | manual | 0.5d | 2019-04-21 | 2019-04-21 |  | Nikita Dik | 4h |
| 31 | 1.3.3.3 | Code review | manual | 0.5d | 2019-04-21 | 2019-04-21 |  | Stas Bespalov | 4h |
| 32 | 1.3.3.4 | Correction after review | manual | 1.5d | 2019-04-21 | 2019-04-22 |  | Nikita Dik | 12h |
| 33 | 1.3.4 | **Additional Tasks** |  | 3.75d | 2019-04-22 | 2019-04-24 |  |  | 12h |
| 34 | 1.3.4.1 | UDP video streamer | manual | 1.5d | 2019-04-22 | 2019-04-23 |  | Nikita Dik | 12h |
| 35 | 1.3.4.2 | Stream encryption | manual | 2.75d | 2019-04-23 | 2019-04-24 |  |  |  |
| 36 | 1.3.5 | Presentation (paralel to dev) | manual | 3.75d | 2019-04-21 | 2019-04-23 |  | Stas Bespalov, Nikita Dik | 30h |
| 37 | 1.3.6 | Documentation re-read | manual | 1.5d | 2019-04-23 | 2019-04-24 |  | Stas Bespalov, Nikita Dik | 12h |
| 38 | 1.3.7 | User Interface | manual | 19.69d | 2019-04-03 | 2019-04-22 | 5 | Stas Bespalov | 144h |
| 39 | 2 | general refinement | manual | 7d | 2019-04-18 | 2019-04-24 |  | Nikita Dik; Stas Bespalov | 28h |
